# Projeto IAPSI

How a schedule from MS Project changed from version to version. A marks actual dates.

## Version 1 (saved 2024-11-14)

Note of the change: Adicionado o MS Project de IAPSI

| ID | WBS | Task | Duration | Start | Finish | Total float | Constraint |
| --- | --- | --- | --- | --- | --- | --- | --- |
| 1 | 1 | **Projeto** | 36d? | 2024-11-25 | 2025-01-11 |  |  |
| 2 | 1.1 | **Reunião Semanal** | 30.25d | 2024-11-28 | 2025-01-09 | 1.75d |  |
| 3 |  | Reunião Semanal 1 | 2h | 2024-11-28 | 2024-11-28 | 31.75d | start no earlier than 2024-11-28 |
| 4 |  | Reunião Semanal 2 | 2h | 2024-12-05 | 2024-12-05 | 26.75d | start no earlier than 2024-12-05 |
| 5 |  | Reunião Semanal 3 | 2h | 2024-12-12 | 2024-12-12 | 21.75d | start no earlier than 2024-12-12 |
| 6 |  | Reunião Semanal 4 | 2h | 2024-12-19 | 2024-12-19 | 16.75d | start no earlier than 2024-12-19 |
| 7 |  | Reunião Semanal 5 | 2h | 2024-12-26 | 2024-12-26 | 11.75d | start no earlier than 2024-12-26 |
| 8 |  | Reunião Semanal 6 | 2h | 2025-01-02 | 2025-01-02 | 6.75d | start no earlier than 2025-01-02 |
| 9 |  | Reunião Semanal 7 | 2h | 2025-01-09 | 2025-01-09 | 1.75d | start no earlier than 2025-01-09 |
| 10 | 1.2 | **Análise e Desenho** | 1d? | 2024-11-25 | 2024-11-25 | 34d |  |
| 11 | 1.2.1 | **Etapa 1** | 1d? | 2024-11-25 | 2024-11-25 | 34d |  |
| 12 |  | Introdução | 1d? | 2024-11-25 | 2024-11-25 | 34d |  |
| 13 |  | Definição Lógica de Negócio | 1d? | 2024-11-25 | 2024-11-25 | 34d |  |
| 14 |  | <New Task> | 1d? | 2024-11-25 | 2024-11-25 | 34d |  |
| 15 |  | <New Task> | 1d? | 2024-11-25 | 2024-11-25 | 34d |  |
| 16 |  | Wireframes | 1d? | 2024-11-25 | 2024-11-25 | 34d |  |
| 17 |  | Entrega Relatório Etapa 1 | 0d | 2024-11-25 | 2024-11-25 | 35d |  |
| 18 | 1.2.2 | **Etapa 2** | 1d? | 2024-11-25 | 2024-11-25 | 34d |  |
| 19 |  | Diagramas Casos de Uso | 1d? | 2024-11-25 | 2024-11-25 | 34d |  |
| 20 |  | Descrição "" | 1d? | 2024-11-25 | 2024-11-25 | 34d |  |
| 21 |  | <New Task> | 1d? | 2024-11-25 | 2024-11-25 | 34d |  |
| 22 |  | Conclusão | 1d? | 2024-11-25 | 2024-11-25 | 34d |  |
| 23 |  | Entrega Relatório Etapa 2 | 0d | 2024-11-25 | 2024-11-25 | 35d |  |
| 24 | 1.3 | **Desenvolvimento** | 1d? | 2024-11-25 | 2024-11-25 | 34d |  |
| 25 | 1.3.1 | **Geral** | 1d? | 2024-11-25 | 2024-11-25 | 34d |  |
| 26 |  | Estrutura Geral do Site | 1d? | 2024-11-25 | 2024-11-25 | 34d |  |
| 27 |  | Criação Folha de Estilo | 1d? | 2024-11-25 | 2024-11-25 | 34d |  |
| 28 |  | <New Task> | 1d? | 2024-11-25 | 2024-11-25 | 34d |  |
| 29 |  | "?????/ Repositório | 1d? | 2024-11-25 | 2024-11-25 | 34d |  |
| 30 | 1.3.2 | **Página Favoritos** | 1d? | 2024-11-25 | 2024-11-25 | 34d |  |
| 31 | 1.3.2.1 | **Criar Lista de Favoritos** | 1d? | 2024-11-25 | 2024-11-25 | 34d |  |
| 32 |  | Estrutura | 1d? | 2024-11-25 | 2024-11-25 | 34d |  |
| 33 |  | Pedidos e mostrar | 1d? | 2024-11-25 | 2024-11-25 | 34d |  |
| 34 |  | Adicionar Favorito | 1d? | 2024-11-25 | 2024-11-25 | 34d |  |
| 35 |  | Remover Favorito | 1d? | 2024-11-25 | 2024-11-25 | 34d |  |
| 36 |  | <New Task> | 1d? | 2024-11-25 | 2024-11-25 | 34d |  |
| 37 |  | <New Task> | 1d? | 2024-11-25 | 2024-11-25 | 34d |  |
| 38 |  | Página Favoritos Terminada | 0d | 2024-11-25 | 2024-11-25 | 35d |  |
| 39 | 1.3.3 | **Página Loja** | 1d? | 2024-11-25 | 2024-11-25 | 34d |  |
| 40 |  | Mostrar Produtos | 1d? | 2024-11-25 | 2024-11-25 | 34d |  |
| 41 |  | Filtrar por País | 1d? | 2024-11-25 | 2024-11-25 | 34d |  |
| 42 |  | <New Task> | 1d? | 2024-11-25 | 2024-11-25 | 34d |  |
| 43 | 1.3.4 | **Página Carrinho** | 1d? | 2024-11-25 | 2024-11-25 | 34d |  |
| 44 |  | <New Task> | 1d? | 2024-11-25 | 2024-11-25 | 34d |  |
| 45 |  | <New Task> | 1d? | 2024-11-25 | 2024-11-25 | 34d |  |
| 46 |  | <New Task> | 1d? | 2024-11-25 | 2024-11-25 | 34d |  |
| 47 | 1.3.5 | **Testes** | 1d? | 2024-11-25 | 2024-11-25 | 34d |  |
| 48 |  | Testes Gerais | 1d? | 2024-11-25 | 2024-11-25 | 34d |  |
| 49 |  | <New Task> | 1d? | 2024-11-25 | 2024-11-25 | 34d |  |
| 50 |  | Entrega Software Funcional | 0d | 2024-11-25 | 2024-11-25 | 35d |  |

## Version 2 (saved 2024-11-28)

Note of the change: Iniciado o desenvolvimento da Homepage

Last finish stays 2025-01-11.

Added:

| ID | Task | Duration | Start | Finish | Predecessors | Resources |
| --- | --- | --- | --- | --- | --- | --- |
| 15 | Análise Concorrencial | 2h | 2024-11-25 08:00 | 2024-11-25 10:00 |  | Diego Teixeira |
| 16 | Especificação de RF e RNF | 4h | 2024-11-25 10:00 | 2024-11-25 15:00 | 12 | Eduardo Carvalho; Miguel Filipe |
| 22 | Stakeholders | 3h | 2024-11-28 15:00 | 2024-11-29 09:00 | 21 | Miguel Filipe |
| 23 | Metodologia | 4h | 2024-12-02 08:00 | 2024-12-02 12:00 | 22 | Eduardo Carvalho |
| 24 | Desvios | 2h | 2024-12-02 13:00 | 2024-12-02 15:00 | 23 | Miguel Filipe |
| 29 | Criação do Repositório Git | 30min | 2024-12-02 15:00 | 2024-12-02 15:30 |  | Eduardo Carvalho |
| 33 | Detalhes do País | 5h | 2024-12-04 13:30 | 2024-12-05 09:30 | 32 | Miguel Filipe |
| 34 | **Página Principal** | 2d | 2024-12-05 09:30 | 2024-12-09 09:30 | 28 |  |
| 35 | Estrutura da Página | 4h | 2024-12-05 09:30 | 2024-12-05 14:30 |  | Eduardo Carvalho |
| 36 | Integração da API | 8h | 2024-12-05 14:30 | 2024-12-06 14:30 | 35 | Diego Teixeira |
| 37 | Mostrar Países Aleatoriamente | 4h | 2024-12-06 14:30 | 2024-12-09 09:30 | 36 | Eduardo Carvalho |
| 38 | Página Principal Terminada | 0d | 2024-12-09 09:30 | 2024-12-09 09:30 | 37 |  |
| 39 | **Página Países** | 1.75d | 2024-12-09 09:30 | 2024-12-10 16:30 | 34 |  |
| 40 | Integração da API | 8h | 2024-12-09 09:30 | 2024-12-10 09:30 |  | Diego Teixeira |
| 41 | Mostrar Países | 6h | 2024-12-10 09:30 | 2024-12-10 16:30 | 40 | Miguel Filipe |
| 42 | Integração dos Filtros | 7h | 2024-12-09 09:30 | 2024-12-10 08:30 |  | Eduardo Carvalho |
| 43 | Função de Pesquisa | 4h | 2024-12-10 08:30 | 2024-12-10 13:30 | 42 | Eduardo Carvalho |
| 44 | Página Países Terminada | 0d | 2024-12-10 13:30 | 2024-12-10 13:30 | 43 |  |
| 45 | **Página Detalhes do País** | 4d | 2024-12-10 16:30 | 2024-12-16 16:30 | 39 |  |
| 46 | Estrutura | 8h | 2024-12-10 16:30 | 2024-12-11 16:30 |  | Diego Teixeira |
| 47 | Integração da API | 12h | 2024-12-11 16:30 | 2024-12-13 14:30 | 46 | Eduardo Carvalho |
| 48 | Mostrar População | 6h | 2024-12-13 14:30 | 2024-12-16 11:30 | 47 | Miguel Filipe |
| 49 | Mostrar Produtos associados ao País | 4h | 2024-12-16 11:30 | 2024-12-16 16:30 | 48 | Diego Teixeira |
| 50 | Página Detalhes Terminada | 0d | 2024-12-16 16:30 | 2024-12-16 16:30 | 49 |  |
| 57 | Ordenar Favoritos | 6h | 2024-12-23 15:00 | 2024-12-24 15:00 | 56 | Diego Teixeira |
| 60 | **Página Sobre** | 0.12d | 2024-12-26 09:00 | 2024-12-26 10:00 | 51 |  |
| 61 | Descrição da Equipa | 1h | 2024-12-26 09:00 | 2024-12-26 10:00 |  | Eduardo Carvalho |
| 62 | Página Sobre Terminada | 0d | 2024-12-26 10:00 | 2024-12-26 10:00 | 61 |  |
| 63 | **Página Contactos** | 0.12d | 2024-12-26 10:00 | 2024-12-26 11:00 | 60 |  |
| 64 | Formulário de Contacto | 1h | 2024-12-26 10:00 | 2024-12-26 11:00 |  | Diego Teixeira |
| 65 | Links para Redes Sociais | 30min | 2024-12-26 10:00 | 2024-12-26 10:30 |  | Miguel Filipe |
| 66 | Página Contactos Terminada | 0d | 2024-12-26 10:30 | 2024-12-26 10:30 | 65 |  |
| 70 | Filtrar por Moeda | 4h | 2024-12-30 08:00 | 2024-12-30 12:00 | 68 | Eduardo Carvalho |
| 72 | Página Loja Terminada | 0d | 2024-12-27 12:00 | 2024-12-27 12:00 | 71 |  |
| 74 | Aumentar ou Diminuir Quantidade | 2h | 2024-12-30 13:00 | 2024-12-30 15:00 |  | Eduardo Carvalho |
| 76 | Finalizar Compra | 4h | 2024-12-30 13:00 | 2024-12-30 17:00 |  | Diego Teixeira |
| 79 | Página Carrinho Terminada | 0d | 2024-12-31 12:00 | 2024-12-31 12:00 | 78 | Miguel Filipe |
| 83 | Testes de Eficiência | 3h | 2024-12-31 15:00 | 2025-01-02 14:00 |  | Eduardo Carvalho |
| 84 | Testes de Fiabilidade | 4h | 2025-01-02 14:00 | 2025-01-03 09:00 | 83 | Eduardo Carvalho |
| 85 | Correção de Erros Críticos | 6h | 2025-01-03 09:00 | 2025-01-03 16:00 | 84 | Diego Teixeira; Miguel Filipe |

Removed: 15 <New Task>; 21 <New Task>; 28 <New Task>; 37 <New Task>

Changed:

| ID | Task | Start | Finish | Duration | Total float | Predecessors | Other |
| --- | --- | --- | --- | --- | --- | --- | --- |
| 1 | **Projeto** | 2024-11-25 → 2024-11-25 08:00 | 2025-01-11 → 2025-01-11 17:00 | 36d? → 34d? |  |  |  |
| 2 | **Reunião Semanal** | 2024-11-28 → 2024-11-28 08:00 | 2025-01-09 → 2025-01-09 10:00 | 30.25d → 28.25d |  |  |  |
| 3 | Reunião Semanal 1 | 2024-11-28 → 2024-11-28 08:00 | 2024-11-28 → 2024-11-28 10:00 |  | 31.75d → 29.75d |  | constraint start no earlier than 2024-11-28 → start no earlier than 2024-11-28 08:00; resources none → Diego Teixeira; Eduardo Carvalho; Miguel Filipe |
| 4 | Reunião Semanal 2 | 2024-12-05 → 2024-12-05 08:00 | 2024-12-05 → 2024-12-05 10:00 |  | 26.75d → 24.75d |  | constraint start no earlier than 2024-12-05 → start no earlier than 2024-12-05 08:00; resources none → Diego Teixeira; Eduardo Carvalho; Miguel Filipe |
| 5 | Reunião Semanal 3 | 2024-12-12 → 2024-12-12 08:00 | 2024-12-12 → 2024-12-12 10:00 |  | 21.75d → 19.75d |  | constraint start no earlier than 2024-12-12 → start no earlier than 2024-12-12 08:00; resources none → Diego Teixeira; Eduardo Carvalho; Miguel Filipe |
| 6 | Reunião Semanal 4 | 2024-12-19 → 2024-12-19 08:00 | 2024-12-19 → 2024-12-19 10:00 |  | 16.75d → 14.75d |  | constraint start no earlier than 2024-12-19 → start no earlier than 2024-12-19 08:00; resources none → Diego Teixeira; Eduardo Carvalho; Miguel Filipe |
| 7 | Reunião Semanal 5 | 2024-12-26 → 2024-12-26 08:00 | 2024-12-26 → 2024-12-26 10:00 |  | 11.75d → 10.75d |  | constraint start no earlier than 2024-12-26 → start no earlier than 2024-12-26 08:00; resources none → Diego Teixeira; Eduardo Carvalho; Miguel Filipe |
| 8 | Reunião Semanal 6 | 2025-01-02 → 2025-01-02 08:00 | 2025-01-02 → 2025-01-02 10:00 |  |  |  | constraint start no earlier than 2025-01-02 → start no earlier than 2025-01-02 08:00; resources none → Diego Teixeira; Eduardo Carvalho; Miguel Filipe |
| 9 | Reunião Semanal 7 | 2025-01-09 → 2025-01-09 08:00 | 2025-01-09 → 2025-01-09 10:00 |  |  |  | constraint start no earlier than 2025-01-09 → start no earlier than 2025-01-09 08:00; resources none → Diego Teixeira; Eduardo Carvalho; Miguel Filipe |
| 10 | **Análise e Desenho** | 2024-11-25 → 2024-11-25 08:00 | 2024-11-25 → 2024-12-02 15:00 (+7d) | 1d? → 5.75d | 34d → 5.38d |  |  |
| 11 | **Etapa 1** | 2024-11-25 → 2024-11-25 08:00 | 2024-11-25 → 2024-11-25 15:00 | 1d? → 0.75d | 34d → 5.38d |  |  |
| 12 | Introdução | 2024-11-25 → 2024-11-25 08:00 | 2024-11-25 → 2024-11-25 10:00 | 1d? → 2h | 34d → 0.19d |  | resources none → Eduardo Carvalho |
| 13 | Definição Lógica de Negócio | 2024-11-25 → 2024-11-25 10:00 | 2024-11-25 → 2024-11-25 11:00 | 1d? → 1h | 34d → 7.88d | none → 12 | resources none → Diego Teixeira |
| 14 | Análise de Impacto do Sistema | 2024-11-25 → 2024-11-25 08:00 | 2024-11-25 → 2024-11-25 09:00 | 1d? → 1h | 34d → 8.12d |  | was named <New Task>; resources none → Miguel Filipe |
| 17 | Wireframes | 2024-11-25 → 2024-11-25 08:00 | 2024-11-25 → 2024-11-25 11:00 | 1d? → 3h | 34d → 7.88d |  | resources none → Miguel Filipe |
| 18 | Entrega Relatório Etapa 1 | 2024-11-25 → 2024-11-25 11:00 | 2024-11-25 → 2024-11-25 11:00 |  | 35d → 7.88d | none → 17 |  |
| 19 | **Etapa 2** | 2024-11-25 → 2024-11-25 15:00 | 2024-11-25 → 2024-12-02 15:00 (+7d) | 1d? → 5d | 34d → 5.38d | none → 11 |  |
| 20 | Diagramas Casos de Uso | 2024-11-25 → 2024-11-25 15:00 | 2024-11-25 → 2024-11-27 15:00 (+2d) | 1d? → 2d | 34d → 5.38d |  | resources none → Eduardo Carvalho |
| 21 | Descrição dos Casos de Uso | 2024-11-25 → 2024-11-27 15:00 (+2d) | 2024-11-25 → 2024-11-28 15:00 (+3d) | 1d? → 1d | 34d → 5.38d | none → 20 | was named Descrição ""; resources none → Diego Teixeira |
| 25 | Conclusão | 2024-11-25 → 2024-11-29 08:00 (+4d) | 2024-11-25 → 2024-11-29 15:00 (+4d) | 1d? → 6h | 34d → 6.38d | none → 21 | resources none → Eduardo Carvalho |
| 26 | Entrega Relatório Etapa 2 | 2024-11-25 → 2024-11-29 15:00 (+4d) | 2024-11-25 → 2024-11-29 15:00 (+4d) |  | 35d → 6.38d | none → 25 |  |
| 27 | **Desenvolvimento** | 2024-11-25 → 2024-12-02 15:00 (+7d) | 2024-11-25 → 2025-01-03 16:00 (+39d) | 1d? → 22.12d | 34d → 5.12d | none → 19 |  |
| 28 | **Geral** | 2024-11-25 → 2024-12-02 15:00 (+7d) | 2024-11-25 → 2024-12-05 09:30 (+10d) | 1d? → 2.44d | 34d → 5.38d |  |  |
| 30 | Estrutura Geral do Site | 2024-11-25 → 2024-12-02 15:30 (+7d) | 2024-11-25 → 2024-12-03 10:30 (+8d) | 1d? → 4h | 34d → 5.38d | none → 29 | resources none → Eduardo Carvalho |
| 31 | Criação Folha de Estilo | 2024-11-25 → 2024-12-03 10:30 (+8d) | 2024-11-25 → 2024-12-03 15:30 (+8d) | 1d? → 2h | 34d → 6.75d | none → 30 | resources none → Diego Teixeira |
| 32 | Integração com a API | 2024-11-25 → 2024-12-03 10:30 (+8d) | 2024-11-25 → 2024-12-04 13:30 (+9d) | 1d? → 1d | 34d → 5.38d | none → 30 | was named "?????/ Repositório; resources none → Miguel Filipe; Eduardo Carvalho |
| 51 | **Página Favoritos** | 2024-11-25 → 2024-12-16 16:30 (+21d) | 2024-11-25 → 2024-12-26 09:00 (+31d) | 1d? → 6.19d | 34d → 5.38d | none → 45 |  |
| 52 | **Criar Lista de Favoritos** | 2024-11-25 → 2024-12-16 16:30 (+21d) | 2024-11-25 → 2024-12-20 09:00 (+25d) | 1d? → 3.19d | 34d → 5.38d |  |  |
| 53 | Estrutura | 2024-11-25 → 2024-12-16 16:30 (+21d) | 2024-11-25 → 2024-12-18 09:30 (+23d) | 1d? → 1d | 34d → 5.38d |  | resources none → Miguel Filipe |
| 54 | Pedidos e mostrar | 2024-11-25 → 2024-12-18 09:30 (+23d) | 2024-11-25 → 2024-12-20 09:00 (+25d) | 1d? → 1d | 34d → 5.38d | none → 53 | resources none → Diego Teixeira |
| 55 | Adicionar Favorito | 2024-11-25 → 2024-12-20 09:00 (+25d) | 2024-11-25 → 2024-12-23 11:00 (+28d) | 1d? → 1d | 34d → 5.38d | none → 54 | resources none → Eduardo Carvalho |
| 56 | Remover Favorito | 2024-11-25 → 2024-12-23 11:00 (+28d) | 2024-11-25 → 2024-12-23 15:00 (+28d) | 1d? → 3h | 34d → 5.38d | none → 55 | resources none → Eduardo Carvalho |
| 58 | Teste da Web Storage | 2024-11-25 → 2024-12-24 15:00 (+29d) | 2024-11-25 → 2024-12-26 09:00 (+31d) | 1d? → 3h | 34d → 5.38d | none → 57 | was named <New Task>; resources none → Eduardo Carvalho; Miguel Filipe |
| 59 | Página Favoritos Terminada | 2024-11-25 → 2024-12-26 09:00 (+31d) | 2024-11-25 → 2024-12-26 09:00 (+31d) |  | 35d → 5.38d | none → 58 |  |
| 67 | **Página Loja** | 2024-11-25 → 2024-12-26 13:00 (+31d) | 2024-11-25 → 2024-12-30 12:00 (+35d) | 1d? → 2d | 34d → 5.25d | none → 63 |  |
| 68 | Mostrar Produtos | 2024-11-25 → 2024-12-26 13:00 (+31d) | 2024-11-25 → 2024-12-26 15:00 (+31d) | 1d? → 2h | 34d → 5.25d |  | resources none → Miguel Filipe |
| 69 | Filtrar por País | 2024-11-25 → 2024-12-26 15:00 (+31d) | 2024-11-25 → 2024-12-26 17:00 (+31d) | 1d? → 2h | 34d → 6.38d | none → 68 | resources none → Eduardo Carvalho |
| 71 | Adicionar ao Carrinho de Compras | 2024-11-25 → 2024-12-27 08:00 (+32d) | 2024-11-25 → 2024-12-27 12:00 (+32d) | 1d? → 4h | 34d → 6.38d | none → 69 | was named <New Task>; resources none → Diego Teixeira |
| 73 | **Página Carrinho** | 2024-11-25 → 2024-12-30 13:00 (+35d) | 2024-11-25 → 2024-12-31 12:00 (+36d) | 1d? → 1d | 34d → 5.38d | none → 67 |  |
| 75 | Adicionar Botão de Remover Produto | 2024-11-25 → 2024-12-30 13:00 (+35d) | 2024-11-25 → 2024-12-30 17:00 (+35d) | 1d? → 4h | 34d → 5.88d |  | was named <New Task>; resources none → Miguel Filipe |
| 77 | Calcular Custos de Entrega | 2024-11-25 → 2024-12-31 08:00 (+36d) | 2024-11-25 → 2024-12-31 10:00 (+36d) | 1d? → 2h | 34d → 5.38d | none → 76 | was named <New Task>; resources none → Eduardo Carvalho |
| 78 | Métodos de Pagamento | 2024-11-25 → 2024-12-31 10:00 (+36d) | 2024-11-25 → 2024-12-31 12:00 (+36d) | 1d? → 2h | 34d → 5.38d | none → 77 | was named <New Task>; resources none → Diego Teixeira |
| 80 | **Testes** | 2024-11-25 → 2024-12-31 13:00 (+36d) | 2024-11-25 → 2025-01-03 16:00 (+39d) | 1d? → 2.38d | 34d → 5.12d | none → 73 |  |
| 81 | Testes Gerais | 2024-11-25 → 2024-12-31 13:00 (+36d) | 2024-11-25 → 2024-12-31 17:00 (+36d) | 1d? → 4h | 34d → 7d | none → 73 | resources none → Diego Teixeira |
| 82 | Testes de Usabilidade | 2024-11-25 → 2024-12-31 13:00 (+36d) | 2024-11-25 → 2024-12-31 16:00 (+36d) | 1d? → 3h | 34d → 7.12d |  | was named <New Task>; resources none → Miguel Filipe |
| 86 | Entrega Software Funcional | 2024-11-25 → 2025-01-03 16:00 (+39d) | 2024-11-25 → 2025-01-03 16:00 (+39d) |  | 35d → 5.12d | none → 85 |  |

## Version 3 (saved 2024-12-14)

Note of the change: Conclusão da Homepage

Last finish stays 2025-01-11. Complete tasks 0 → 58.

Changed:

| ID | Task | Start | Finish | Complete | Total float |
| --- | --- | --- | --- | --- | --- |
| 1 | **Projeto** | 2024-11-25 08:00 A |  | 0% → 89% |  |
| 2 | **Reunião Semanal** | 2024-11-28 08:00 A | 2025-01-09 10:00 A | 0% → 100% | 1.75d → none |
| 3 | Reunião Semanal 1 | 2024-11-28 08:00 A | 2024-11-28 10:00 A | 0% → 100% | 29.75d → none |
| 4 | Reunião Semanal 2 | 2024-12-05 08:00 A | 2024-12-05 10:00 A | 0% → 100% | 24.75d → none |
| 5 | Reunião Semanal 3 | 2024-12-12 08:00 A | 2024-12-12 10:00 A | 0% → 100% | 19.75d → none |
| 6 | Reunião Semanal 4 | 2024-12-19 08:00 A | 2024-12-19 10:00 A | 0% → 100% | 14.75d → none |
| 7 | Reunião Semanal 5 | 2024-12-26 08:00 A | 2024-12-26 10:00 A | 0% → 100% | 10.75d → none |
| 8 | Reunião Semanal 6 | 2025-01-02 08:00 A | 2025-01-02 10:00 A | 0% → 100% | 6.75d → none |
| 9 | Reunião Semanal 7 | 2025-01-09 08:00 A | 2025-01-09 10:00 A | 0% → 100% | 1.75d → none |
| 10 | **Análise e Desenho** | 2024-11-25 08:00 A | 2024-12-02 15:00 A | 0% → 100% | 5.38d → none |
| 11 | **Etapa 1** | 2024-11-25 08:00 A | 2024-11-25 15:00 A | 0% → 100% | 5.38d → none |
| 12 | Introdução | 2024-11-25 08:00 A | 2024-11-25 10:00 A | 0% → 100% | 0.19d → none |
| 13 | Definição Lógica de Negócio | 2024-11-25 10:00 A | 2024-11-25 11:00 A | 0% → 100% | 7.88d → none |
| 14 | Análise de Impacto do Sistema | 2024-11-25 08:00 A | 2024-11-25 09:00 A | 0% → 100% | 8.12d → none |
| 15 | Análise Concorrencial | 2024-11-25 08:00 A | 2024-11-25 10:00 A | 0% → 100% | 8d → none |
| 16 | Especificação de RF e RNF | 2024-11-25 10:00 A | 2024-11-25 15:00 A | 0% → 100% | 0.19d → none |
| 17 | Wireframes | 2024-11-25 08:00 A | 2024-11-25 11:00 A | 0% → 100% | 7.88d → none |
| 18 | Entrega Relatório Etapa 1 | 2024-11-25 11:00 A | 2024-11-25 11:00 A | 0% → 100% | 7.88d → none |
| 19 | **Etapa 2** | 2024-11-25 15:00 A | 2024-12-02 15:00 A | 0% → 100% | 5.38d → none |
| 20 | Diagramas Casos de Uso | 2024-11-25 15:00 A | 2024-11-27 15:00 A | 0% → 100% | 5.38d → none |
| 21 | Descrição dos Casos de Uso | 2024-11-27 15:00 A | 2024-11-28 15:00 A | 0% → 100% | 5.38d → none |
| 22 | Stakeholders | 2024-11-28 15:00 A | 2024-11-29 09:00 A | 0% → 100% | 5.38d → none |
| 23 | Metodologia | 2024-12-02 08:00 A | 2024-12-02 12:00 A | 0% → 100% | 5.38d → none |
| 24 | Desvios | 2024-12-02 13:00 A | 2024-12-02 15:00 A | 0% → 100% | 5.38d → none |
| 25 | Conclusão | 2024-11-29 08:00 A | 2024-11-29 15:00 A | 0% → 100% | 6.38d → none |
| 26 | Entrega Relatório Etapa 2 | 2024-11-29 15:00 A | 2024-11-29 15:00 A | 0% → 100% | 6.38d → none |
| 27 | **Desenvolvimento** | 2024-12-02 15:00 A |  | 0% → 85% |  |
| 28 | **Geral** | 2024-12-02 15:00 A | 2024-12-05 09:30 A | 0% → 100% | 5.38d → none |
| 29 | Criação do Repositório Git | 2024-12-02 15:00 A | 2024-12-02 15:30 A | 0% → 100% | 5.38d → none |
| 30 | Estrutura Geral do Site | 2024-12-02 15:30 A | 2024-12-03 10:30 A | 0% → 100% | 5.38d → none |
| 31 | Criação Folha de Estilo | 2024-12-03 10:30 A | 2024-12-03 15:30 A | 0% → 100% | 6.75d → none |
| 32 | Integração com a API | 2024-12-03 10:30 A | 2024-12-04 13:30 A | 0% → 100% | 5.38d → none |
| 33 | Detalhes do País | 2024-12-04 13:30 A | 2024-12-05 09:30 A | 0% → 100% | 5.38d → none |
| 34 | **Página Principal** | 2024-12-05 09:30 A | 2024-12-09 09:30 A | 0% → 100% | 5.38d → none |
| 35 | Estrutura da Página | 2024-12-05 09:30 A | 2024-12-05 14:30 A | 0% → 100% | 5.38d → none |
| 36 | Integração da API | 2024-12-05 14:30 A | 2024-12-06 14:30 A | 0% → 100% | 5.38d → none |
| 37 | Mostrar Países Aleatoriamente | 2024-12-06 14:30 A | 2024-12-09 09:30 A | 0% → 100% | 5.38d → none |
| 38 | Página Principal Terminada | 2024-12-09 09:30 A | 2024-12-09 09:30 A | 0% → 100% | 5.38d → none |
| 39 | **Página Países** | 2024-12-09 09:30 A | 2024-12-10 16:30 A | 0% → 100% | 5.38d → none |
| 40 | Integração da API | 2024-12-09 09:30 A | 2024-12-10 09:30 A | 0% → 100% | 5.38d → none |
| 41 | Mostrar Países | 2024-12-10 09:30 A | 2024-12-10 16:30 A | 0% → 100% | 5.38d → none |
| 42 | Integração dos Filtros | 2024-12-09 09:30 A | 2024-12-10 08:30 A | 0% → 100% | 5.75d → none |
| 43 | Função de Pesquisa | 2024-12-10 08:30 A | 2024-12-10 13:30 A | 0% → 100% | 5.75d → none |
| 44 | Página Países Terminada | 2024-12-10 13:30 A | 2024-12-10 13:30 A | 0% → 100% | 5.75d → none |
| 45 | **Página Detalhes do País** | 2024-12-10 16:30 A | 2024-12-16 16:30 A | 0% → 100% | 5.38d → none |
| 46 | Estrutura | 2024-12-10 16:30 A | 2024-12-11 16:30 A | 0% → 100% | 5.38d → none |
| 47 | Integração da API | 2024-12-11 16:30 A | 2024-12-13 14:30 A | 0% → 100% | 5.38d → none |
| 48 | Mostrar População | 2024-12-13 14:30 A | 2024-12-16 11:30 A | 0% → 100% | 5.38d → none |
| 49 | Mostrar Produtos associados ao País | 2024-12-16 11:30 A | 2024-12-16 16:30 A | 0% → 100% | 5.38d → none |
| 50 | Página Detalhes Terminada | 2024-12-16 16:30 A | 2024-12-16 16:30 A | 0% → 100% | 5.38d → none |
| 51 | **Página Favoritos** | 2024-12-16 16:30 A | 2024-12-26 09:00 A | 0% → 100% | 5.38d → none |
| 52 | **Criar Lista de Favoritos** | 2024-12-16 16:30 A | 2024-12-20 09:00 A | 0% → 100% | 5.38d → none |
| 53 | Estrutura | 2024-12-16 16:30 A | 2024-12-18 09:30 A | 0% → 100% | 5.38d → none |
| 54 | Pedidos e mostrar | 2024-12-18 09:30 A | 2024-12-20 09:00 A | 0% → 100% | 5.38d → none |
| 55 | Adicionar Favorito | 2024-12-20 09:00 A | 2024-12-23 11:00 A | 0% → 100% | 5.38d → none |
| 56 | Remover Favorito | 2024-12-23 11:00 A | 2024-12-23 15:00 A | 0% → 100% | 5.38d → none |
| 57 | Ordenar Favoritos | 2024-12-23 15:00 A | 2024-12-24 15:00 A | 0% → 100% | 5.38d → none |
| 58 | Teste da Web Storage | 2024-12-24 15:00 A | 2024-12-26 09:00 A | 0% → 100% | 5.38d → none |
| 59 | Página Favoritos Terminada | 2024-12-26 09:00 A | 2024-12-26 09:00 A | 0% → 100% | 5.38d → none |
| 60 | **Página Sobre** | 2024-12-26 09:00 A | 2024-12-26 10:00 A | 0% → 100% | 5.38d → none |
| 61 | Descrição da Equipa | 2024-12-26 09:00 A | 2024-12-26 10:00 A | 0% → 100% | 5.38d → none |
| 62 | Página Sobre Terminada | 2024-12-26 10:00 A | 2024-12-26 10:00 A | 0% → 100% | 5.38d → none |
| 63 | **Página Contactos** | 2024-12-26 10:00 A | 2024-12-26 11:00 A | 0% → 100% | 5.38d → none |
| 64 | Formulário de Contacto | 2024-12-26 10:00 A | 2024-12-26 11:00 A | 0% → 100% | 5.38d → none |
| 65 | Links para Redes Sociais | 2024-12-26 10:00 A | 2024-12-26 10:30 A | 0% → 100% | 5.44d → none |
| 66 | Página Contactos Terminada | 2024-12-26 10:30 A | 2024-12-26 10:30 A | 0% → 100% | 5.44d → none |
| 80 | **Testes** | 2024-12-31 13:00 A | 2025-01-03 16:00 A | 0% → 100% | 5.12d → none |
| 81 | Testes Gerais | 2024-12-31 13:00 A | 2024-12-31 17:00 A | 0% → 100% | 7d → none |
| 82 | Testes de Usabilidade | 2024-12-31 13:00 A | 2024-12-31 16:00 A | 0% → 100% | 7.12d → none |
| 83 | Testes de Eficiência | 2024-12-31 15:00 A | 2025-01-02 14:00 A | 0% → 100% | 5.12d → none |

| ID | Task | Start | Finish | Complete | Total float |
| --- | --- | --- | --- | --- | --- |
| 84 | Testes de Fiabilidade | 2025-01-02 14:00 A | 2025-01-03 09:00 A | 0% → 100% | 5.12d → none |
| 85 | Correção de Erros Críticos | 2025-01-03 09:00 A | 2025-01-03 16:00 A | 0% → 100% | 5.12d → none |
| 86 | Entrega Software Funcional | 2025-01-03 16:00 A | 2025-01-03 16:00 A | 0% → 100% | 5.12d → none |

## Version 4 (saved 2024-12-21)

Note of the change: Concluída a Página de Países, Favoritos e Detalhes do País

Last finish stays 2025-01-11.

Changed:

| ID | Task | Start | Finish | Duration | Complete | Total float | Predecessors | Other |
| --- | --- | --- | --- | --- | --- | --- | --- | --- |
| 1 | **Projeto** |  |  |  | 89% → 87% |  |  | baseline start none → 2024-11-25 08:00; baseline finish none → 2025-01-11 17:00 |
| 2 | **Reunião Semanal** |  |  |  |  |  |  | baseline start none → 2024-11-28 08:00; baseline finish none → 2025-01-09 10:00 |
| 3 | Reunião Semanal 1 |  |  |  |  |  |  | baseline start none → 2024-11-28 08:00; baseline finish none → 2024-11-28 10:00 |
| 4 | Reunião Semanal 2 |  |  |  |  |  |  | baseline start none → 2024-12-05 08:00; baseline finish none → 2024-12-05 10:00 |
| 5 | Reunião Semanal 3 |  |  |  |  |  |  | baseline start none → 2024-12-12 08:00; baseline finish none → 2024-12-12 10:00 |
| 6 | Reunião Semanal 4 |  |  |  |  |  |  | baseline start none → 2024-12-19 08:00; baseline finish none → 2024-12-19 10:00 |
| 7 | Reunião Semanal 5 |  |  |  |  |  |  | baseline start none → 2024-12-26 08:00; baseline finish none → 2024-12-26 10:00 |
| 8 | Reunião Semanal 6 |  |  |  |  |  |  | baseline start none → 2025-01-02 08:00; baseline finish none → 2025-01-02 10:00 |
| 9 | Reunião Semanal 7 |  |  |  |  |  |  | baseline start none → 2025-01-09 08:00; baseline finish none → 2025-01-09 10:00 |
| 10 | **Análise e Desenho** |  | 2024-12-02 15:00 A → 2025-01-06 15:00 A (+35d) | 5.75d → 28.75d |  |  |  | baseline start none → 2024-11-25 08:00; baseline finish none → 2024-12-02 15:00 |
| 11 | **Etapa 1** |  |  |  |  |  |  | baseline start none → 2024-11-25 08:00; baseline finish none → 2024-11-25 15:00 |
| 12 | Introdução |  |  |  |  |  |  | baseline start none → 2024-11-25 08:00; baseline finish none → 2024-11-25 10:00 |
| 13 | Definição Lógica de Negócio |  |  |  |  |  |  | baseline start none → 2024-11-25 10:00; baseline finish none → 2024-11-25 11:00 |
| 14 | Análise de Impacto do Sistema |  |  |  |  |  |  | baseline start none → 2024-11-25 08:00; baseline finish none → 2024-11-25 09:00 |
| 15 | Análise Concorrencial |  |  |  |  |  |  | baseline start none → 2024-11-25 08:00; baseline finish none → 2024-11-25 10:00 |
| 16 | Especificação de RF e RNF |  |  |  |  |  |  | baseline start none → 2024-11-25 10:00; baseline finish none → 2024-11-25 15:00 |
| 17 | Wireframes |  |  |  |  |  |  | baseline start none → 2024-11-25 08:00; baseline finish none → 2024-11-25 11:00 |
| 18 | Entrega Relatório Etapa 1 |  |  |  |  |  |  | baseline start none → 2024-11-25 11:00; baseline finish none → 2024-11-25 11:00 |
| 19 | **Etapa 2** |  | 2024-12-02 15:00 A → 2025-01-06 15:00 A (+35d) | 5d → 28d |  |  | 11 → none | baseline start none → 2024-11-25 15:00; baseline finish none → 2024-12-02 15:00 |
| 20 | Diagramas Casos de Uso |  |  |  |  |  |  | baseline start none → 2024-11-25 15:00; baseline finish none → 2024-11-27 15:00 |
| 21 | Descrição dos Casos de Uso |  |  |  |  |  |  | baseline start none → 2024-11-27 15:00; baseline finish none → 2024-11-28 15:00 |
| 22 | Stakeholders |  |  |  |  |  |  | baseline start none → 2024-11-28 15:00; baseline finish none → 2024-11-29 09:00 |
| 23 | Metodologia |  |  |  |  |  |  | baseline start none → 2024-12-02 08:00; baseline finish none → 2024-12-02 12:00 |
| 24 | Desvios | 2024-12-02 13:00 A → 2025-01-06 08:00 A (+35d) | 2024-12-02 15:00 A → 2025-01-06 10:00 A (+35d) |  |  |  | 23 → 85 | baseline start none → 2025-01-06 08:00; baseline finish none → 2025-01-06 17:00 |
| 25 | Conclusão | 2024-11-29 08:00 A → 2025-01-06 08:00 A (+38d) | 2024-11-29 15:00 A → 2025-01-06 15:00 A (+38d) |  |  |  | 21 → none | baseline start none → 2025-01-06 08:00; baseline finish none → 2024-11-29 15:00 |
| 26 | Entrega Relatório Etapa 2 |  |  |  |  |  |  | baseline start none → 2024-11-29 15:00; baseline finish none → 2024-11-29 15:00 |
| 27 | **Desenvolvimento** |  |  |  | 85% → 81% |  | 19 → 23 | baseline start none → 2024-12-02 15:00; baseline finish none → 2025-01-03 16:00 |
| 28 | **Geral** |  |  |  |  |  |  | baseline start none → 2024-12-02 15:00; baseline finish none → 2024-12-05 09:30 |
| 29 | Criação do Repositório Git |  |  |  |  |  |  | baseline start none → 2024-12-02 15:00; baseline finish none → 2024-12-02 15:30 |
| 30 | Estrutura Geral do Site |  |  |  |  |  |  | baseline start none → 2024-12-02 15:30; baseline finish none → 2024-12-03 10:30 |
| 31 | Criação Folha de Estilo |  |  |  |  |  |  | baseline start none → 2024-12-03 10:30; baseline finish none → 2024-12-03 15:30 |
| 32 | Integração com a API |  | 2024-12-04 13:30 A → 2024-12-04 10:30 A |  |  |  |  | resources Miguel Filipe; Eduardo Carvalho → Miguel Filipe; baseline start none → 2024-12-03 10:30; baseline finish none → 2024-12-04 13:30 |
| 33 | Detalhes do País |  |  |  |  |  |  | baseline start none → 2024-12-04 13:30; baseline finish none → 2024-12-05 09:30 |
| 34 | **Página Principal** |  | 2024-12-09 09:30 A → 2024-12-09 16:30 A | 2d → 2.75d |  |  |  | baseline start none → 2024-12-05 09:30; baseline finish none → 2024-12-09 09:30 |
| 35 | Estrutura da Página |  | 2024-12-05 14:30 A → 2024-12-06 14:30 A (+1d) | 4h → 12h |  |  |  | baseline start none → 2024-12-05 09:30; baseline finish none → 2024-12-05 14:30 |
| 36 | Integração da API | 2024-12-05 14:30 A → 2024-12-09 08:00 A (+4d) | 2024-12-06 14:30 A → 2024-12-09 09:00 A (+3d) | 8h → 1h |  |  |  | baseline start none → 2024-12-05 14:30; baseline finish none → 2024-12-06 14:30 |
| 37 | Mostrar Países Aleatoriamente | 2024-12-06 14:30 A → 2024-12-09 14:30 A (+3d) | 2024-12-09 09:30 A → 2024-12-09 15:30 A | 4h → 1h |  |  |  | resources Eduardo Carvalho → Miguel Filipe; baseline start none → 2024-12-06 14:30; baseline finish none → 2024-12-09 09:30 |
| 38 | Página Principal Terminada | 2024-12-09 09:30 A → 2024-12-09 16:30 A | 2024-12-09 09:30 A → 2024-12-09 16:30 A |  |  |  |  | baseline start none → 2024-12-09 09:30; baseline finish none → 2024-12-09 09:30 |
| 39 | **Página Países** |  |  |  |  |  |  | baseline start none → 2024-12-09 09:30; baseline finish none → 2024-12-10 16:30 |
| 40 | Integração da API |  | 2024-12-10 09:30 A → 2024-12-09 14:30 A (-1d) | 8h → 4h |  |  |  | baseline start none → 2024-12-09 09:30; baseline finish none → 2024-12-10 09:30 |
| 41 | Mostrar Países |  |  |  |  |  |  | baseline start none → 2024-12-10 09:30; baseline finish none → 2024-12-10 16:30 |
| 42 | Integração dos Filtros |  |  |  |  |  |  | baseline start none → 2024-12-09 09:30; baseline finish none → 2024-12-10 08:30 |
| 43 | Função de Pesquisa |  |  |  |  |  |  | baseline start none → 2024-12-10 08:30; baseline finish none → 2024-12-10 13:30 |
| 44 | Página Países Terminada |  |  |  |  |  |  | baseline start none → 2024-12-10 13:30; baseline finish none → 2024-12-10 13:30 |
| 45 | **Página Detalhes do País** |  |  |  |  |  |  | baseline start none → 2024-12-10 16:30; baseline finish none → 2024-12-16 16:30 |
| 46 | Estrutura |  | 2024-12-11 16:30 A → 2024-12-11 11:30 A | 8h → 4h |  |  |  | baseline start none → 2024-12-10 16:30; baseline finish none → 2024-12-11 17:00 |
| 47 | Integração da API |  | 2024-12-13 14:30 A → 2024-12-12 11:30 A (-1d) | 12h → 2h |  |  |  | baseline start none → 2024-12-11 16:30; baseline finish none → 2024-12-13 14:30 |
| 48 | Mostrar População |  | 2024-12-16 11:30 A → 2024-12-13 16:30 A (-3d) | 6h → 2h |  |  |  | baseline start none → 2024-12-13 14:30; baseline finish none → 2024-12-16 11:30 |
| 49 | Mostrar Produtos associados ao País | 2024-12-16 11:30 A → 2024-12-13 16:30 A (-3d) | 2024-12-16 16:30 A → 2024-12-16 09:30 A | 4h → 2h |  |  |  | baseline start none → 2024-12-16 11:30; baseline finish none → 2024-12-16 16:30 |
| 50 | Página Detalhes Terminada |  |  |  |  |  |  | baseline start none → 2024-12-16 16:30; baseline finish none → 2024-12-16 16:30 |
| 51 | **Página Favoritos** |  |  |  |  |  |  | baseline start none → 2024-12-16 16:30; baseline finish none → 2024-12-26 09:00 |
| 52 | **Criar Lista de Favoritos** |  |  |  |  |  |  | baseline start none → 2024-12-16 16:30; baseline finish none → 2024-12-20 09:00 |
| 53 | Estrutura |  | 2024-12-18 09:30 A → 2024-12-17 14:30 A (-1d) | 1d → 4h |  |  |  | baseline start none → 2024-12-16 16:30; baseline finish none → 2024-12-18 09:30 |
| 54 | Pedidos e mostrar |  |  |  |  |  |  | baseline start none → 2024-12-18 09:30; baseline finish none → 2024-12-20 09:00 |
| 55 | Adicionar Favorito |  | 2024-12-23 11:00 A → 2024-12-20 15:00 A (-3d) | 1d → 5h |  |  |  | baseline start none → 2024-12-20 09:00; baseline finish none → 2024-12-23 11:00 |
| 56 | Remover Favorito |  |  |  |  |  |  | baseline start none → 2024-12-23 11:00; baseline finish none → 2024-12-23 15:00 |
| 57 | Ordenar Favoritos |  | 2024-12-24 15:00 A → 2024-12-23 16:00 A (-1d) | 6h → 1h |  |  |  | baseline start none → 2024-12-23 15:00; baseline finish none → 2024-12-24 15:00 |
| 58 | Teste da Web Storage |  |  |  |  |  |  | baseline start none → 2024-12-24 15:00; baseline finish none → 2024-12-26 09:00 |
| 59 | Página Favoritos Terminada |  |  |  |  |  |  | baseline start none → 2024-12-26 09:00; baseline finish none → 2024-12-26 09:00 |
| 60 | **Página Sobre** |  |  |  |  |  |  | baseline start none → 2024-12-26 09:00; baseline finish none → 2024-12-26 10:00 |
| 61 | Descrição da Equipa |  |  |  |  |  |  | baseline start none → 2024-12-26 09:00; baseline finish none → 2024-12-26 10:00 |
| 62 | Página Sobre Terminada |  |  |  |  |  |  | baseline start none → 2024-12-26 10:00; baseline finish none → 2024-12-26 10:00 |
| 63 | **Página Contactos** |  |  |  |  |  |  | baseline start none → 2024-12-26 10:00; baseline finish none → 2024-12-26 11:00 |
| 64 | Formulário de Contacto |  |  |  |  |  |  | baseline start none → 2024-12-26 10:00; baseline finish none → 2024-12-26 11:00 |
| 65 | Links para Redes Sociais |  |  |  |  |  |  | baseline start none → 2024-12-26 10:00; baseline finish none → 2024-12-26 10:30 |
| 66 | Página Contactos Terminada |  |  |  |  |  |  | baseline start none → 2024-12-26 10:30; baseline finish none → 2024-12-26 10:30 |
| 67 | **Página Loja** |  |  |  |  |  |  | baseline start none → 2024-12-26 13:00; baseline finish none → 2024-12-30 12:00 |
| 68 | Mostrar Produtos |  |  |  |  |  |  | baseline start none → 2024-12-26 13:00; baseline finish none → 2024-12-26 15:00 |
| 69 | Filtrar por País |  |  |  |  | 6.38d → 8.5d |  | baseline start none → 2024-12-26 15:00; baseline finish none → 2024-12-26 17:00 |
| 70 | Filtrar por Moeda |  |  |  |  |  |  | baseline start none → 2024-12-30 08:00; baseline finish none → 2024-12-30 12:00 |

| ID | Task | Total float | Other |
| --- | --- | --- | --- |
| 71 | Adicionar ao Carrinho de Compras | 6.38d → 8.5d | baseline start none → 2024-12-27 08:00; baseline finish none → 2024-12-27 12:00 |
| 72 | Página Loja Terminada | 6.38d → 8.5d | baseline start none → 2024-12-27 12:00; baseline finish none → 2024-12-27 12:00 |
| 73 | **Página Carrinho** |  | baseline start none → 2024-12-30 13:00; baseline finish none → 2024-12-31 12:00 |
| 74 | Aumentar ou Diminuir Quantidade | 6.12d → 8.25d | baseline start none → 2024-12-30 13:00; baseline finish none → 2024-12-30 15:00 |
| 75 | Adicionar Botão de Remover Produto | 5.88d → 8d | baseline start none → 2024-12-30 13:00; baseline finish none → 2024-12-30 17:00 |
| 76 | Finalizar Compra |  | baseline start none → 2024-12-30 13:00; baseline finish none → 2024-12-30 17:00 |
| 77 | Calcular Custos de Entrega |  | baseline start none → 2024-12-31 08:00; baseline finish none → 2024-12-31 10:00 |
| 78 | Métodos de Pagamento |  | baseline start none → 2024-12-31 10:00; baseline finish none → 2024-12-31 12:00 |
| 79 | Página Carrinho Terminada |  | baseline start none → 2024-12-31 12:00; baseline finish none → 2024-12-31 12:00 |
| 80 | **Testes** |  | baseline start none → 2024-12-31 13:00; baseline finish none → 2025-01-03 16:00 |
| 81 | Testes Gerais |  | baseline start none → 2024-12-31 13:00; baseline finish none → 2024-12-31 17:00 |
| 82 | Testes de Usabilidade |  | baseline start none → 2024-12-31 13:00; baseline finish none → 2024-12-31 16:00 |
| 83 | Testes de Eficiência |  | baseline start none → 2024-12-31 15:00; baseline finish none → 2025-01-02 14:00 |
| 84 | Testes de Fiabilidade |  | baseline start none → 2025-01-02 14:00; baseline finish none → 2025-01-03 09:00 |
| 85 | Correção de Erros Críticos |  | baseline start none → 2025-01-03 09:00; baseline finish none → 2025-01-03 16:00 |
| 86 | Entrega Software Funcional |  | baseline start none → 2025-01-03 16:00; baseline finish none → 2025-01-03 16:00 |
